# Breckwoldt_W_Launching_the_Ergonomics_Program

Schedule from MS Project, 2021-07-19 to 2022-02-04, costs in $.

## Calendars

- Standard: Mon-Fri 08:00-12:00, 13:00-17:00; Sat-Sun off.

## Resources

| Resource | Rate | Cost per use | Notes |
| --- | --- | --- | --- |
| William Breckwoldt (Project Manager) | 55 |  |  |
| BIW Ergonomist | 50 |  |  |
| Supervisor | 40 |  | Supervise the work of BIW labor. |
| 2000 Pneumatic Tools (Grinders and Sanders) |  | 1700000 | These tools will be replacing the old grinders and sanders which were believed to be the cause of the muscoskeletal injuries and illnesses. |
| Estimates Analyst | 40 |  |  |
| Ben Zavitz (Ergonomics Consultant ) | 50 |  | The citation required that BIW seek the help of an Ergonomics Consultant, then hire their own full-time resident ergonomist. |
| Maintenance | 40 |  | Specialize in BIW machinary. Useful in identify issues with machinary and intalling new tools and machinary. |
| Financial Analyst | 45 |  |  |
| Engineer | 60 |  |  |

## Schedule

| ID | WBS | Task | Type | Duration | Start | Finish | Predecessors | Baseline start | Baseline finish | Baseline duration | Total slack | Free slack | Constraint | Resources | Work | Cost | Baseline cost |
| --- | --- | --- | --- | --- | --- | --- | --- | --- | --- | --- | --- | --- | --- | --- | --- | --- | --- |
| 1 | 1 | **Overall Project** |  | 145d | 2021-07-19 | 2022-02-04 |  | 2021-07-19 | 2022-03-25 | 180d | 0d |  |  |  | 2224h | 1,812,120 | 1,812,120 |
| 2 | 1.1 | **Project Management** |  | 145d | 2021-07-19 | 2022-02-04 |  | 2021-07-19 | 2022-03-25 | 180d | 0d |  |  |  | 2224h | 1,812,120 | 1,812,120 |
| 3 | 1.1.1 | Project Start | milestone | 0d | 2021-07-19 | 2021-07-19 |  | 2021-07-19 | 2021-07-19 | 0d | 145d |  |  | William Breckwoldt (Project Manager) |  |  |  |
| 4 | 1.1.2 | **Project Initiation** |  | 12d | 2021-08-01 | 2021-08-17 |  | 2021-08-01 | 2021-08-17 | 12d | 0d |  |  |  | 136h | 6,920 | 6,920 |
| 5 | 1.1.2.1 | **Feasibility Study** |  | 6d | 2021-08-01 | 2021-08-09 |  | 2021-08-01 | 2021-08-09 | 6d | 0d |  |  |  | 56h | 2,520 | 2,520 |
| 6 | 1.1.2.1.1 | Review Citation |  | 2d | 2021-08-01 | 2021-08-03 |  | 2021-08-01 | 2021-08-03 | 2d | 0d |  | must start on 2021-08-01 | Financial Analyst | 16h | 720 | 720 |
| 7 | 1.1.2.1.2 | Evaluate EEFs |  | 2d | 2021-08-02 | 2021-08-03 | 6SS | 2021-08-02 | 2021-08-03 | 2d | 6d |  |  | Financial Analyst | 16h | 720 | 720 |
| 8 | 1.1.2.1.3 | Evaluate OPAs |  | 2d | 2021-08-02 | 2021-08-03 | 6SS | 2021-08-02 | 2021-08-03 | 2d | 6d |  |  | Financial Analyst | 16h | 720 | 720 |
| 9 | 1.1.2.1.4 | Complete Study |  | 1d | 2021-08-04 | 2021-08-04 | 6 | 2021-08-04 | 2021-08-04 | 1d | 0d |  |  | Financial Analyst [50%] | 4h | 180 | 180 |
| 10 | 1.1.2.1.5 | Present Findings |  | 1d | 2021-08-09 | 2021-08-09 | 9FS+2d | 2021-08-09 | 2021-08-09 | 1d | 0d |  |  | Financial Analyst [50%] | 4h | 180 | 180 |
| 11 | 1.1.2.2 | **Project Charter** |  | 3d | 2021-08-12 | 2021-08-16 | 5 | 2021-08-12 | 2021-08-16 | 3d | 0d |  | start no earlier than 2021-08-12 |  | 64h | 3,520 | 3,520 |
| 12 | 1.1.2.2.1 | Review Documents |  | 2d | 2021-08-12 | 2021-08-13 | 10FS+2d | 2021-08-12 | 2021-08-13 | 2d | 0d |  |  | William Breckwoldt (Project Manager) | 16h | 880 | 880 |
| 13 | 1.1.2.2.2 | Review Agreements |  | 2d | 2021-08-12 | 2021-08-13 | 12SS | 2021-08-12 | 2021-08-13 | 2d | 1d |  |  | William Breckwoldt (Project Manager) | 16h | 880 | 880 |
| 14 | 1.1.2.2.3 | Create Assumption Log |  | 2d | 2021-08-12 | 2021-08-13 | 12SS | 2021-08-12 | 2021-08-13 | 2d | 1d |  |  | William Breckwoldt (Project Manager) | 16h | 880 | 880 |
| 15 | 1.1.2.2.4 | Create Project Charter |  | 2d | 2021-08-13 | 2021-08-16 | 12SS+1d | 2021-08-13 | 2021-08-16 | 2d | 0d |  |  | William Breckwoldt (Project Manager) | 16h | 880 | 880 |
| 16 | 1.1.2.3 | **Stakeholder Identification** |  | 1d | 2021-08-17 | 2021-08-17 | 11 | 2021-08-17 | 2021-08-17 | 1d | 0d |  |  |  | 16h | 880 | 880 |
| 17 | 1.1.2.3.1 | Review Documents |  | 1d | 2021-08-17 | 2021-08-17 | 15 | 2021-08-17 | 2021-08-17 | 1d | 0d |  |  | William Breckwoldt (Project Manager) | 8h | 440 | 440 |
| 18 | 1.1.2.3.2 | Create Stakeholder Register |  | 1d | 2021-08-17 | 2021-08-17 | 17SS | 2021-08-17 | 2021-08-17 | 1d | 0d |  |  | William Breckwoldt (Project Manager) | 8h | 440 | 440 |
| 19 | 1.1.3 | Project Initiation Completed | milestone | 0d | 2021-08-17 | 2021-08-17 | 18 | 2021-08-17 | 2021-08-17 | 0d | 123d |  |  | William Breckwoldt (Project Manager) |  |  |  |
| 20 | 1.1.4 | **Project Plan** |  | 83d | 2021-08-18 | 2021-12-10 | 4 | 2021-08-18 | 2021-12-10 | 83d | 0d |  |  |  | 1448h | 74,520 | 74,520 |
| 21 | 1.1.4.1 | **Project Management Plan** |  | 8d | 2021-08-18 | 2021-08-27 |  | 2021-08-18 | 2021-08-27 | 8d | 0d |  |  |  | 88h | 4,840 | 4,840 |
| 22 | 1.1.4.1.1 | Create Resource Management Plan |  | 2d | 2021-08-18 | 2021-08-19 | 18 | 2021-08-18 | 2021-08-19 | 2d | 0d |  |  | William Breckwoldt (Project Manager) | 16h | 880 | 880 |
| 23 | 1.1.4.1.2 | Create Procurement Management Plan |  | 2d | 2021-08-20 | 2021-08-23 | 22 | 2021-08-20 | 2021-08-23 | 2d | 77d | 0d |  | William Breckwoldt (Project Manager) | 16h | 880 | 880 |
| 24 | 1.1.4.1.3 | Create Cost Baseline |  | 2d | 2021-08-24 | 2021-08-25 | 23 | 2021-08-24 | 2021-08-25 | 2d | 77d |  |  | William Breckwoldt (Project Manager) | 16h | 880 | 880 |
| 25 | 1.1.4.1.4 | Update Project Documents |  | 5d | 2021-08-23 | 2021-08-27 | 22FS+1d | 2021-08-23 | 2021-08-27 | 5d | 0d |  |  | William Breckwoldt (Project Manager) | 40h | 2,200 | 2,200 |

Notes:
- 1: All the task highlighted in yellow are on the critical path.
- 6: Must start on August 1st, as this workpackage is the first of the project which must start on August 1st.
- 10: Lag here to give PM time to prepare and schedule for the presentation.
- 12: Lag here to give key stakeholders time to evaluate findings and present any changes to the project that need to be made.

| ID | WBS | Task | Duration | Start | Finish | Predecessors | Baseline start | Baseline finish | Baseline duration | Total slack | Free slack | Resources | Work | Cost | Baseline cost |
| --- | --- | --- | --- | --- | --- | --- | --- | --- | --- | --- | --- | --- | --- | --- | --- |
| 26 | 1.1.4.2 | **Scope Management Plan** | 6d | 2021-08-30 | 2021-09-06 |  | 2021-08-30 | 2021-09-06 | 6d | 0d |  |  | 48h | 2,640 | 2,640 |
| 27 | 1.1.4.2.1 | Create Scope Management Plan | 3d | 2021-08-30 | 2021-09-01 | 25 | 2021-08-30 | 2021-09-01 | 3d | 0d |  | William Breckwoldt (Project Manager) | 24h | 1,320 | 1,320 |
| 28 | 1.1.4.2.2 | Create Requirements Management Plan | 3d | 2021-09-02 | 2021-09-06 | 27 | 2021-09-02 | 2021-09-06 | 3d | 0d |  | William Breckwoldt (Project Manager) | 24h | 1,320 | 1,320 |
| 29 | 1.1.4.3 | **Requirements Collection** | 15d | 2021-09-07 | 2021-09-27 | 26 | 2021-09-07 | 2021-09-27 | 15d | 0d |  |  | 648h | 32,760 | 32,760 |
| 30 | 1.1.4.3.1 | **Injuries and Illness Evaluation** | 5d | 2021-09-07 | 2021-09-13 | 28 | 2021-09-07 | 2021-09-13 | 5d | 0d |  |  | 256h | 13,440 | 13,440 |
| 31 | 1.1.4.3.1.1 | Review Project Documents | 1d | 2021-09-07 | 2021-09-07 |  | 2021-09-07 | 2021-09-07 | 1d | 0d |  | William Breckwoldt (Project Manager); Ben Zavitz (Ergonomics Consultant ) | 16h | 840 | 840 |
| 32 | 1.1.4.3.1.2 | Review Job Tasks | 5d | 2021-09-07 | 2021-09-13 | 31SS | 2021-09-07 | 2021-09-13 | 5d | 0d |  | Ben Zavitz (Ergonomics Consultant ); William Breckwoldt (Project Manager) | 80h | 4,200 | 4,200 |
| 33 | 1.1.4.3.1.3 | Review Medical Records | 5d | 2021-09-07 | 2021-09-13 | 32SS | 2021-09-07 | 2021-09-13 | 5d | 10d |  | Ben Zavitz (Ergonomics Consultant ); William Breckwoldt (Project Manager) | 80h | 4,200 | 4,200 |
| 34 | 1.1.4.3.1.4 | Conduct Employee Interviews | 5d | 2021-09-07 | 2021-09-13 | 32SS | 2021-09-07 | 2021-09-13 | 5d | 0d |  | Ben Zavitz (Ergonomics Consultant ); William Breckwoldt (Project Manager) | 80h | 4,200 | 4,200 |
| 35 | 1.1.4.3.2 | **Workplace Hazards** | 5d | 2021-09-07 | 2021-09-13 | 30SS | 2021-09-07 | 2021-09-13 | 5d | 0d |  |  | 160h | 7,800 | 7,800 |
| 36 | 1.1.4.3.2.1 | Issue Surveys to Employees | 5d | 2021-09-07 | 2021-09-13 | 34SS | 2021-09-07 | 2021-09-13 | 5d | 0d |  | Ben Zavitz (Ergonomics Consultant ); William Breckwoldt (Project Manager) | 80h | 4,200 | 4,200 |
| 37 | 1.1.4.3.2.2 | Examine Tools, Machinery, Materials, etc. | 5d | 2021-09-07 | 2021-09-13 | 36SS | 2021-09-07 | 2021-09-13 | 5d | 0d |  | Ben Zavitz (Ergonomics Consultant ); Maintenance | 80h | 3,600 | 3,600 |
| 38 | 1.1.4.3.3 | **Safety Education** | 5d | 2021-09-14 | 2021-09-20 | 35 | 2021-09-14 | 2021-09-20 | 5d | 0d |  |  | 80h | 4,200 | 4,200 |
| 39 | 1.1.4.3.3.1 | Issue Safety Evaluations for Employees | 5d | 2021-09-14 | 2021-09-20 | 37 | 2021-09-14 | 2021-09-20 | 5d | 0d |  | Ben Zavitz (Ergonomics Consultant ); William Breckwoldt (Project Manager) | 80h | 4,200 | 4,200 |
| 40 | 1.1.4.3.4 | **Supervision/Management** | 5d | 2021-09-14 | 2021-09-20 | 38SS | 2021-09-14 | 2021-09-20 | 5d | 0d |  |  | 48h | 1,920 | 1,920 |
| 41 | 1.1.4.3.4.1 | Supervise Operations | 5d | 2021-09-14 | 2021-09-20 | 39SS | 2021-09-14 | 2021-09-20 | 5d | 0d |  | Supervisor | 40h | 1,600 | 1,600 |
| 42 | 1.1.4.3.4.2 | Complete Safety Evaluations | 1d | 2021-09-20 | 2021-09-20 | 41FS-1d | 2021-09-20 | 2021-09-20 | 1d | 0d |  | Supervisor | 8h | 320 | 320 |
| 43 | 1.1.4.3.5 | **Final Requirements** | 5d | 2021-09-21 | 2021-09-27 | 40 | 2021-09-21 | 2021-09-27 | 5d | 0d |  |  | 104h | 5,400 | 5,400 |
| 44 | 1.1.4.3.5.1 | Compile Research | 1d | 2021-09-21 | 2021-09-21 | 41 | 2021-09-21 | 2021-09-21 | 1d | 0d |  | William Breckwoldt (Project Manager) | 8h | 440 | 440 |
| 45 | 1.1.4.3.5.2 | Evaluate Research | 4d | 2021-09-22 | 2021-09-27 | 44 | 2021-09-22 | 2021-09-27 | 4d | 0d |  | Ben Zavitz (Ergonomics Consultant ); William Breckwoldt (Project Manager) | 64h | 3,360 | 3,360 |
| 46 | 1.1.4.3.5.3 | Identify At-Risk Employees | 2d | 2021-09-22 | 2021-09-23 | 45SS | 2021-09-22 | 2021-09-23 | 2d | 0d |  | Ben Zavitz (Ergonomics Consultant ) | 16h | 800 | 800 |
| 47 | 1.1.4.3.5.4 | Determine Causes for Injuries and Illnesses | 2d | 2021-09-24 | 2021-09-27 | 46 | 2021-09-24 | 2021-09-27 | 2d | 0d |  | Ben Zavitz (Ergonomics Consultant ) | 16h | 800 | 800 |
| 48 | 1.1.4.4 | **Project Scope** | 9d | 2021-09-28 | 2021-10-08 | 29 | 2021-09-28 | 2021-10-08 | 9d | 0d |  |  | 168h | 9,040 | 9,040 |
| 49 | 1.1.4.4.1 | Review Project Documents | 5d | 2021-09-28 | 2021-10-04 | 47 | 2021-09-28 | 2021-10-04 | 5d | 0d |  | William Breckwoldt (Project Manager) | 40h | 2,200 | 2,200 |
| 50 | 1.1.4.4.2 | Seek Expert Judgement | 5d | 2021-09-28 | 2021-10-04 | 49SS | 2021-09-28 | 2021-10-04 | 5d | 4d | 0d | Ben Zavitz (Ergonomics Consultant ) | 40h | 2,000 | 2,000 |
| 51 | 1.1.4.4.3 | Perform Multicriteria Decision Analysis | 2d | 2021-10-01 | 2021-10-04 | 50FS-2d | 2021-10-01 | 2021-10-04 | 2d | 4d |  | William Breckwoldt (Project Manager) | 16h | 880 | 880 |
| 52 | 1.1.4.4.4 | Perform Product Analysis | 5d | 2021-09-28 | 2021-10-04 | 49SS | 2021-09-28 | 2021-10-04 | 5d | 0d |  | William Breckwoldt (Project Manager) | 40h | 2,200 | 2,200 |
| 53 | 1.1.4.4.5 | Create Project Scope Statement | 2d | 2021-10-05 | 2021-10-06 | 52 | 2021-10-05 | 2021-10-06 | 2d | 0d |  | William Breckwoldt (Project Manager) | 16h | 880 | 880 |
| 54 | 1.1.4.4.6 | Update Project Documents | 2d | 2021-10-07 | 2021-10-08 | 53 | 2021-10-07 | 2021-10-08 | 2d | 0d |  | William Breckwoldt (Project Manager) | 16h | 880 | 880 |

Notes:
- 42: Lead here because the safety evaluations can be completed during supervision to ensure accuracy.

| ID | WBS | Task | Duration | Start | Finish | Predecessors | Baseline start | Baseline finish | Baseline duration | Total slack | Resources | Work | Cost | Baseline cost |
| --- | --- | --- | --- | --- | --- | --- | --- | --- | --- | --- | --- | --- | --- | --- |
| 55 | 1.1.4.5 | **Project Schedule** | 9d | 2021-10-11 | 2021-10-21 | 48 | 2021-10-11 | 2021-10-21 | 9d | 0d |  | 120h | 6,240 | 6,240 |
| 56 | 1.1.4.5.1 | Plan Schedule Management | 2d | 2021-10-11 | 2021-10-12 | 54 | 2021-10-11 | 2021-10-12 | 2d | 0d | William Breckwoldt (Project Manager) | 16h | 880 | 880 |
| 57 | 1.1.4.5.2 | Define Activities | 2d | 2021-10-13 | 2021-10-14 | 56 | 2021-10-13 | 2021-10-14 | 2d | 0d | William Breckwoldt (Project Manager) | 16h | 880 | 880 |
| 58 | 1.1.4.5.3 | Sequence Activites | 3d | 2021-10-14 | 2021-10-18 | 57SS+1d | 2021-10-14 | 2021-10-18 | 3d | 0d | William Breckwoldt (Project Manager) | 24h | 1,320 | 1,320 |
| 59 | 1.1.4.5.4 | Estimate Activity Durations | 3d | 2021-10-15 | 2021-10-19 | 58SS+1d | 2021-10-15 | 2021-10-19 | 3d | 0d | Estimates Analyst; William Breckwoldt (Project Manager) | 48h | 2,280 | 2,280 |
| 60 | 1.1.4.5.5 | Update WBS | 2d | 2021-10-20 | 2021-10-21 | 59 | 2021-10-20 | 2021-10-21 | 2d | 0d | William Breckwoldt (Project Manager) | 16h | 880 | 880 |
| 61 | 1.1.4.6 | **Project Cost** | 6d | 2021-10-22 | 2021-10-29 | 55 | 2021-10-22 | 2021-10-29 | 6d | 0d |  | 80h | 3,600 | 3,600 |
| 62 | 1.1.4.6.1 | Plan Cost Management | 2d | 2021-10-22 | 2021-10-25 | 60 | 2021-10-22 | 2021-10-25 | 2d | 0d | Estimates Analyst; Financial Analyst; William Breckwoldt (Project Manager) | 48h | 2,240 | 2,240 |
| 63 | 1.1.4.6.2 | Estimate Project Costs | 2d | 2021-10-26 | 2021-10-27 | 62 | 2021-10-26 | 2021-10-27 | 2d | 0d | Estimates Analyst | 16h | 640 | 640 |
| 64 | 1.1.4.6.3 | Determine Budget | 2d | 2021-10-28 | 2021-10-29 | 63 | 2021-10-28 | 2021-10-29 | 2d | 0d | Financial Analyst | 16h | 720 | 720 |
| 65 | 1.1.4.7 | **Quality** | 2d | 2021-11-01 | 2021-11-02 | 61 | 2021-11-01 | 2021-11-02 | 2d | 0d |  | 32h | 1,520 | 1,520 |
| 66 | 1.1.4.7.1 | Plan Quality Management | 2d | 2021-11-01 | 2021-11-02 | 64 | 2021-11-01 | 2021-11-02 | 2d | 0d | William Breckwoldt (Project Manager); Estimates Analyst | 32h | 1,520 | 1,520 |
| 67 | 1.1.4.8 | **Resources** | 4d | 2021-11-03 | 2021-11-08 | 65 | 2021-11-03 | 2021-11-08 | 4d | 0d |  | 32h | 1,520 | 1,520 |
| 68 | 1.1.4.8.1 | Plan Resource Management | 2d | 2021-11-03 | 2021-11-04 | 66 | 2021-11-03 | 2021-11-04 | 2d | 0d | William Breckwoldt (Project Manager) | 16h | 880 | 880 |
| 69 | 1.1.4.8.2 | Estimate Activity Resources | 2d | 2021-11-05 | 2021-11-08 | 68 | 2021-11-05 | 2021-11-08 | 2d | 0d | Estimates Analyst | 16h | 640 | 640 |
| 70 | 1.1.4.9 | **Communications** | 1d | 2021-11-09 | 2021-11-09 | 67 | 2021-11-09 | 2021-11-09 | 1d | 0d |  | 8h | 440 | 440 |
| 71 | 1.1.4.9.1 | Plan Communications Management | 1d | 2021-11-09 | 2021-11-09 | 69 | 2021-11-09 | 2021-11-09 | 1d | 0d | William Breckwoldt (Project Manager) | 8h | 440 | 440 |
| 72 | 1.1.4.10 | **Risk** | 6d | 2021-11-10 | 2021-11-17 | 70 | 2021-11-10 | 2021-11-17 | 6d | 0d |  | 96h | 4,880 | 4,880 |
| 73 | 1.1.4.10.1 | Plan Risk Management | 2d | 2021-11-10 | 2021-11-11 | 71 | 2021-11-10 | 2021-11-11 | 2d | 0d | William Breckwoldt (Project Manager) | 16h | 880 | 880 |
| 74 | 1.1.4.10.2 | Identify Risks | 2d | 2021-11-12 | 2021-11-15 | 73 | 2021-11-12 | 2021-11-15 | 2d | 0d | William Breckwoldt (Project Manager) | 16h | 880 | 880 |
| 75 | 1.1.4.10.3 | Perform Qualitative Risk Analysis | 2d | 2021-11-16 | 2021-11-17 | 74 | 2021-11-16 | 2021-11-17 | 2d | 0d | William Breckwoldt (Project Manager) | 16h | 880 | 880 |
| 76 | 1.1.4.10.4 | Perform Quantitative Risk Analysis | 2d | 2021-11-16 | 2021-11-17 | 75SS | 2021-11-16 | 2021-11-17 | 2d | 0d | Estimates Analyst; Financial Analyst; William Breckwoldt (Project Manager) | 48h | 2,240 | 2,240 |
| 77 | 1.1.4.11 | **Procurement** | 5d | 2021-11-18 | 2021-11-24 | 72 | 2021-11-18 | 2021-11-24 | 5d | 0d |  | 40h | 2,200 | 2,200 |
| 78 | 1.1.4.11.1 | Plan Procurement Management | 5d | 2021-11-18 | 2021-11-24 | 76 | 2021-11-18 | 2021-11-24 | 5d | 0d | William Breckwoldt (Project Manager) | 40h | 2,200 | 2,200 |

| ID | WBS | Task | Type | Duration | Start | Finish | Predecessors | Baseline start | Baseline finish | Baseline duration | Total slack | Free slack | Resources | Work | Cost | Baseline cost |
| --- | --- | --- | --- | --- | --- | --- | --- | --- | --- | --- | --- | --- | --- | --- | --- | --- |
| 79 | 1.1.4.12 | **Stakeholder Management** |  | 5d | 2021-11-25 | 2021-12-01 | 77 | 2021-11-25 | 2021-12-01 | 5d | 0d |  |  | 40h | 2,200 | 2,200 |
| 80 | 1.1.4.12.1 | Plan Stakeholder Engagement |  | 5d | 2021-11-25 | 2021-12-01 | 78 | 2021-11-25 | 2021-12-01 | 5d | 0d |  | William Breckwoldt (Project Manager) | 40h | 2,200 | 2,200 |
| 81 | 1.1.4.13 | **Project Plan Evaluation and Ajustments** |  | 7d | 2021-12-02 | 2021-12-10 | 79 | 2021-12-02 | 2021-12-10 | 7d | 0d |  |  | 48h | 2,640 | 2,640 |
| 82 | 1.1.4.13.1 | Present Project Plan |  | 1d | 2021-12-02 | 2021-12-02 | 80 | 2021-12-02 | 2021-12-02 | 1d | 0d |  | William Breckwoldt (Project Manager) [50%] | 4h | 220 | 220 |
| 83 | 1.1.4.13.2 | Analyze Key Stakeholder Feedback |  | 1d | 2021-12-03 | 2021-12-03 | 82 | 2021-12-03 | 2021-12-03 | 1d | 0d |  | William Breckwoldt (Project Manager) [50%] | 4h | 220 | 220 |
| 84 | 1.1.4.13.3 | Make Planning Adjustments |  | 5d | 2021-12-06 | 2021-12-10 | 83 | 2021-12-06 | 2021-12-10 | 5d | 0d |  | William Breckwoldt (Project Manager) | 40h | 2,200 | 2,200 |
| 85 | 1.1.5 | Project Planning Completed | milestone | 0d | 2021-12-01 | 2021-12-01 | 80 | 2021-12-01 | 2021-12-01 | 0d | 47d |  | William Breckwoldt (Project Manager) |  |  |  |
| 86 | 1.1.6 | **Program Execution** |  | 13d | 2021-12-13 | 2021-12-29 | 20 | 2021-12-13 | 2021-12-29 | 13d | 0d |  |  | 120h | 1,706,280 | 1,706,280 |
| 87 | 1.1.6.1 | **Kickoff Meeting** |  | 2d | 2021-12-13 | 2021-12-14 | 79 | 2021-12-13 | 2021-12-14 | 2d | 0d |  |  | 16h | 880 | 880 |
| 88 | 1.1.6.1.1 | Inform Stakeholders |  | 1d | 2021-12-13 | 2021-12-13 | 80 | 2021-12-13 | 2021-12-13 | 1d | 0d |  | William Breckwoldt (Project Manager) | 8h | 440 | 440 |
| 89 | 1.1.6.1.2 | Assign Additional Work |  | 1d | 2021-12-14 | 2021-12-14 | 88 | 2021-12-14 | 2021-12-14 | 1d | 0d |  | William Breckwoldt (Project Manager) | 8h | 440 | 440 |
| 90 | 1.1.6.2 | **New Safety and Health Integration** |  | 11d | 2021-12-15 | 2021-12-29 | 87 | 2021-12-15 | 2021-12-29 | 11d | 0d |  |  | 104h | 1,705,400 | 1,705,400 |
| 91 | 1.1.6.2.1 | Manage Bids for Tools Upgrade |  | 5d | 2021-12-15 | 2021-12-21 | 89 | 2021-12-15 | 2021-12-21 | 5d | 0d |  | William Breckwoldt (Project Manager) | 40h | 2,200 | 2,200 |
| 92 | 1.1.6.2.2 | Seek Expert Judgement |  | 1d | 2021-12-22 | 2021-12-22 | 91 | 2021-12-22 | 2021-12-22 | 1d | 0d |  | Engineer; William Breckwoldt (Project Manager) | 16h | 920 | 920 |
| 93 | 1.1.6.2.3 | Evaluate Bids |  | 1d | 2021-12-23 | 2021-12-23 | 92 | 2021-12-23 | 2021-12-23 | 1d | 0d |  | William Breckwoldt (Project Manager) | 8h | 440 | 440 |
| 94 | 1.1.6.2.4 | Accept the Best Bid |  | 1d | 2021-12-24 | 2021-12-24 | 93 | 2021-12-24 | 2021-12-24 | 1d | 0d |  | William Breckwoldt (Project Manager) | 8h | 440 | 440 |
| 95 | 1.1.6.2.5 | Upgrade Tools |  | 3d | 2021-12-27 | 2021-12-29 | 94 | 2021-12-27 | 2021-12-29 | 3d | 0d |  | Maintenance; 2000 Pneumatic Tools (Grinders and Sanders) | 24h | 1,700,960 | 1,700,960 |
| 96 | 1.1.6.2.6 | Introduce Improved Safety Education Program |  | 1d | 2021-12-29 | 2021-12-29 | 95FS-1d | 2021-12-29 | 2021-12-29 | 1d | 0d |  | William Breckwoldt (Project Manager) | 8h | 440 | 440 |
| 97 | 1.1.7 | Project Exectution Completed | milestone | 0d | 2021-12-29 | 2021-12-29 | 96 | 2021-12-29 | 2021-12-29 | 0d | 27d |  | William Breckwoldt (Project Manager) |  |  |  |
| 98 | 1.1.8 | **Project Monitoring and Tracking** |  | 17d | 2021-12-30 | 2022-01-21 | 86 | 2021-12-20 | 2022-03-11 | 60d | 0d |  |  | 400h | 18,400 | 18,400 |
| 99 | 1.1.8.1 | **Safety and Health Tracking** |  | 17d | 2021-12-30 | 2022-01-21 | 90 | 2021-12-20 | 2022-03-11 | 60d | 0d |  |  | 400h | 18,400 | 18,400 |
| 100 | 1.1.8.1.1 | Record Indicence Rates |  | 10d | 2021-12-30 | 2022-01-12 | 96 | 2021-12-30 | 2022-01-12 | 10d | 7d | 0d | BIW Ergonomist | 80h | 4,000 | 4,000 |
| 101 | 1.1.8.1.2 | Monitor Safety/Health Practices |  | 10d | 2021-12-30 | 2022-01-12 | 100SS | 2021-12-30 | 2022-01-12 | 10d | 7d | 0d | Supervisor | 80h | 3,200 | 3,200 |
| 102 | 1.1.8.1.3 | Conduct Supervisor Meetings |  | 10d | 2022-01-10 | 2022-01-21 | 96FS+7d | 2022-01-10 | 2022-01-21 | 10d | 0d |  | BIW Ergonomist; Supervisor | 160h | 7,200 | 7,200 |
| 103 | 1.1.8.1.4 | Follow Safety Improvements in Shipbuilding |  | 10d | 2021-12-30 | 2022-01-12 | 100SS, 101SS | 2021-12-30 | 2022-01-12 | 10d | 7d |  | BIW Ergonomist | 80h | 4,000 | 4,000 |
| 104 | 1.1.9 | Project Monitoring and Tracking Completed | milestone | 0d | 2022-01-12 | 2022-01-12 | 103 | 2021-07-19 | 2021-07-19 | 0d | 17d |  | William Breckwoldt (Project Manager) |  |  |  |

Notes:
- 102: - Weekly meetings and email communication

| ID | WBS | Task | Type | Duration | Start | Finish | Predecessors | Baseline start | Baseline finish | Baseline duration | Total slack | Resources | Work | Cost | Baseline cost |
| --- | --- | --- | --- | --- | --- | --- | --- | --- | --- | --- | --- | --- | --- | --- | --- |
| 105 | 1.1.10 | **Project Closout** |  | 10d | 2022-01-24 | 2022-02-04 | 98 | 2022-03-14 | 2022-03-25 | 10d | 0d |  | 120h | 6,000 | 6,000 |
| 106 | 1.1.10.1 | **Audit** |  | 10d | 2022-01-24 | 2022-02-04 | 99 | 2022-03-14 | 2022-03-25 | 10d | 0d |  | 120h | 6,000 | 6,000 |
| 107 | 1.1.10.1.1 | Evaluate Actual to Initial Costs |  | 5d | 2022-01-24 | 2022-01-28 | 103 | 2022-03-14 | 2022-03-18 | 5d | 0d | Financial Analyst | 40h | 1,800 | 1,800 |
| 108 | 1.1.10.1.2 | Evaluate Recent Incidents and Performance |  | 5d | 2022-01-24 | 2022-01-28 | 107SS | 2022-03-14 | 2022-03-18 | 5d | 0d | BIW Ergonomist | 40h | 2,000 | 2,000 |
| 109 | 1.1.10.1.3 | Conclude Project |  | 5d | 2022-01-31 | 2022-02-04 | 107, 108 | 2022-03-21 | 2022-03-25 | 5d | 0d | William Breckwoldt (Project Manager) | 40h | 2,200 | 2,200 |
| 110 | 1.1.10.1.4 | Project Completed | milestone | 0d | 2022-02-04 | 2022-02-04 | 109 | 2022-03-25 | 2022-03-25 | 0d | 0d | William Breckwoldt (Project Manager) |  |  |  |

Notes:
- 109: - Lessons learned / - Project Report
